Schedule from MS Project, 2018-09-17 to 2019-01-15, status date 2018-11-10, 1 hours a day.
Microsoft

## Calendars

- PRD2018-G03-Diary: Mon-Fri 20:00-21:00; Sat-Sun 17:00-19:00.

## Resources

| Resource |
| --- |
| 骆佳俊 |
| 沈启航 |
| 徐哲远 |
| 杨以恒 |
| 叶柏成 |

## Schedule

| ID | WBS | Task | Type | Duration | Start | Finish | Predecessors | Total slack | Free slack | Constraint | Resources | Work | Text2 | Text3 | 输出 | 输入 |
| --- | --- | --- | --- | --- | --- | --- | --- | --- | --- | --- | --- | --- | --- | --- | --- | --- |
| 1 | 1 | 软件工程系列课程教学辅助网站系统-项目 |  | 154d | 2018-09-17 20:00 | 2019-01-15 20:00 |  | 0d |  | finish no earlier than 2019-01-15 20:00 |  |  |  |  |  |  |
| 2 | 2 | **项目启动** |  | 61.6d | 2018-09-17 19:00 | 2018-11-04 17:36 | 1SS | 0d |  |  |  | 123.45h |  |  |  |  |
| 3 | 2.1 | 人员召集 | manual | 1h | 2018-09-17 19:00 | 2018-09-17 20:00 |  |  |  |  | 沈启航 | 1h | 课题课程要求 | 人员名单 |  |  |
| 4 | 2.2 | 课题选定 |  | 1h | 2018-09-18 20:00 | 2018-09-18 21:00 | 3 | 10d | 0d | start no earlier than 2018-09-18 19:00 | 沈启航 | 1h | 人员名单 | 选题 | 《项目章程》起草 | 课程要求 |
| 5 | 2.3 | 《项目章程》起草 |  | 1h | 2018-10-20 18:00 | 2018-10-20 20:00 | 4 | -30d | 0d | finish no earlier than 2018-10-20 20:00 | 沈启航 [20%] | 0.2h | 课题课程要求 | 项目章程初稿 | 《项目章程》初稿 | 课题选定 |
| 6 | 2.4 | 第一次正式会议 | manual | 0.5h | 2018-09-28 19:00 | 2018-09-28 19:30 | 4 |  |  |  | 骆佳俊; 沈启航 [50%]; 徐哲远; 杨以恒; 叶柏成 | 2.25h | 人员名单 | 会议记录 | GIT基本操作的了解及试用 UML的ppt模板选定 | 项目要求 |
| 7 | 2.5 | Project的学习 |  | 8h | 2018-10-01 20:00 | 2018-10-07 18:00 | 6 | 1d |  | start no earlier than 2018-10-01 19:00 | 骆佳俊 | 8h |  |  |  | 学习资料 |
| 8 | 2.6 | Git的学习 |  | 9h | 2018-10-01 20:00 | 2018-10-07 19:00 | 6 | 0d |  | start no earlier than 2018-10-01 19:00 | 沈启航 | 9h |  |  |  | 学习资料 |
| 9 | 2.7 | AxureRP学习 |  | 9d | 2018-10-01 20:00 | 2018-10-07 20:00 | 6 | 45d |  | finish no earlier than 2018-10-07 20:00 | 杨以恒 | 9h |  |  |  | 学习资料 |
| 10 | 2.8 | 第二次正式会议 | manual | 1h | 2018-10-08 20:00 | 2018-10-08 21:00 | 6, 7, 8 |  |  |  | 骆佳俊; 沈启航; 徐哲远; 杨以恒; 叶柏成 | 5h |  |  | UMLppt的制作 | Project学习、Git学习 |
| 11 | 2.9 | **UML学习** |  | 33.6d | 2018-10-09 20:00 | 2018-11-04 17:36 | 10 | 0d |  |  |  | 88h |  |  |  |  |
| 12 | 2.9.1 | 翻转课堂UML概述PPT制作 | manual | 7h | 2018-10-09 20:00 | 2018-10-14 18:00 | 10 |  |  |  | 沈启航; 徐哲远; 杨以恒; 叶柏成; 骆佳俊 | 35h |  |  | UML概述翻转PPT | ppt模板 |
| 13 | 2.9.2 | 第三次正式会议 | manual | 1h | 2018-10-16 19:00 | 2018-10-16 20:00 | 12, 10 |  |  |  | 骆佳俊 [50%]; 沈启航 [50%]; 徐哲远 [50%]; 杨以恒 [50%]; 叶柏成 [50%] | 2.5h | 翻转课堂UML概述PPT | 会议记录 | UML工具PPT的任务布置 | UML概述PPT |
| 14 | 2.9.3 | 翻转课堂UML工具PPT制作 | manual | 7h | 2018-10-17 20:00 | 2018-10-21 19:00 | 13 |  |  | finish no earlier than 2018-10-21 20:00 | 徐哲远 [20%]; 杨以恒 [50%]; 叶柏成 [50%]; 骆佳俊 [50%]; 沈启航 [50%] | 15.4h |  |  | UML工具PPT | ppt模板 |
| 15 | 2.9.4 | 第四次正式会议 | manual | 1h | 2018-10-23 19:00 | 2018-10-23 20:00 | 13, 14 |  |  |  | 骆佳俊 [50%]; 沈启航 [50%]; 徐哲远 [50%]; 杨以恒 [50%]; 叶柏成 [50%] | 2.5h | 翻转课堂UML工具PPT | 会议记录 | 甘特图&WBS 愿景和范围 质量保证计划文档及PPT | UML工具PPT |
| 16 | 2.9.5 | 翻转课堂UML基础IPPT制作 | manual | 7h | 2018-10-24 20:00 | 2018-10-28 19:00 | 15 |  |  | finish no earlier than 2018-10-28 20:00 | 骆佳俊 [30%]; 沈启航 [30%]; 杨以恒 [30%]; 徐哲远 [30%]; 叶柏成 [30%] | 10.5h |  |  | UML基础IPPT | ppt模板 |
| 17 | 2.9.6 | 第五次正式会议 | manual | 1h | 2018-10-30 19:00 | 2018-10-30 20:00 | 15, 16 |  |  |  | 骆佳俊; 沈启航 [10%]; 徐哲远; 杨以恒; 叶柏成 | 4.1h | 翻转课堂UML基础IPPT | 会议记录 | 甘特图时间修改 需求项目工程计划PPT，界面原型PPT制作 | UML基础IPPT |
| 18 | 2.9.7 | 翻转课堂UML基础IIPPT制作 | manual | 5.6h | 2018-10-31 20:00 | 2018-11-04 17:36 | 17 |  |  | start no earlier than 2018-10-31 19:00 | 沈启航; 骆佳俊; 徐哲远; 叶柏成; 杨以恒 | 18h |  |  | UML基础II PPT | ppt模板 |
| 19 | 3 | **项目计划** |  | 72d | 2018-09-17 20:00 | 2018-11-11 20:00 | 1SS | 0d |  |  |  | 59.87h |  |  |  |  |
| 20 | 3.1 | 资料申请与完善 |  | 1h | 2018-09-17 20:00 | 2018-09-17 21:00 | 3 | 62d | 17d |  | 骆佳俊 | 1h |  | 资源 | 资料 | 人员召集 |
| 21 | 3.2 | 软硬件环境落实 |  | 9d | 2018-10-01 20:00 | 2018-10-07 20:00 | 20 | 45d |  | finish no earlier than 2018-10-07 20:00 | 叶柏成 | 9h | 小组现有软硬件情况 | 硬件软件环境 | 资料 | 课题选定 |
| 22 | 3.3 | 识别项目干系人 |  | 1h | 2018-09-19 20:00 | 2018-09-19 21:00 | 4 | 68d | 0d |  | 沈启航 | 1h |  |  | 干系人表 | 课题选定 |
| 23 | 3.4 | 找ISO&GB模板和PPT模板 |  | 1h | 2018-09-20 20:00 | 2018-09-20 21:00 | 22 | 68d |  |  | 骆佳俊; 杨以恒 | 2h |  |  | 模板 | 课题选定 |
| 24 | 3.5 | 第六次正式会议 | manual | 1h | 2018-11-05 19:00 | 2018-11-05 20:00 | 17 |  |  |  | 骆佳俊; 沈启航; 徐哲远; 杨以恒; 叶柏成 | 5h |  |  |  |  |
| 25 | 3.6 | 《项目章程》修改v0.1.1 | manual | 1.67h | 2018-10-21 17:00 | 2018-10-21 18:40 | 5 |  |  |  | 沈启航 [10%]; 杨以恒 [30%] | 0.57h |  |  | 《项目章程》v0.1.1 | 《项目章程》起草 |
| 26 | 3.7 | 《项目章程》修改v0.1.2 | manual | 1h | 2018-10-21 18:40 | 2018-10-22 20:40 | 25 |  |  |  | 沈启航 | 1h |  |  | 《项目章程》v0.1.2 | 《项目章程》v0.1.1 |
| 27 | 3.8 | 《项目章程》发布 | milestone, manual | 0h | 2018-10-22 20:40 | 2018-10-22 20:40 | 26 |  |  |  |  |  |  |  | 《项目章程》 | 《项目章程》v0.1.2 |

| ID | WBS | Task | Type | Duration | Start | Finish | Predecessors | Total slack | Constraint | Resources | Work | 输出 | 输入 | Text2 | Text3 |
| --- | --- | --- | --- | --- | --- | --- | --- | --- | --- | --- | --- | --- | --- | --- | --- |
| 28 | 3.9 | **制定需求工程项目计划** |  | 59d | 2018-09-28 20:00 | 2018-11-11 20:00 | 5 | 0d |  |  | 40.3h |  |  |  |  |
| 29 | 3.9.1 | 《需求工程项目计划》起草 | manual | 1h | 2018-09-28 20:00 | 2018-09-28 21:00 | 6 |  | start no earlier than 2018-09-28 19:00 | 沈启航 [50%] | 0.5h | 《需求工程计划》初步 | 《项目章程》 |  |  |
| 30 | 3.9.2 | 《需求工程项目计划》修订v0.1.1 | manual | 4h | 2018-09-29 17:00 | 2018-09-30 19:00 | 29 |  |  | 叶柏成; 骆佳俊; 沈启航; 徐哲远; 杨以恒 | 20h | 《需求工程项目计划》修订v0.1.1 | 《需求工程项目计划》起草 |  |  |
| 31 | 3.9.3 | 《需求工程项目计划》修订v0.1.2 | manual | 9d | 2018-10-17 19:00 | 2018-10-21 20:00 | 30 |  |  | 骆佳俊 [10%]; 沈启航 [10%]; 徐哲远 [30%]; 杨以恒 [10%]; 叶柏成 [10%] | 6.3h | 《需求工程项目计划》修订v0.1.2 | 《需求工程项目计划》修订v0.1.1 |  |  |
| 32 | 3.9.4 | 《需求工程项目计划》修订v0.1.3 | manual | 7d | 2018-10-26 19:00 | 2018-10-28 20:00 | 31 |  |  | 骆佳俊 [30%]; 沈启航 [30%]; 徐哲远 [30%]; 杨以恒 [30%]; 叶柏成 [30%] | 10.5h | 《需求工程项目计划》修订v0.1.3 | 《需求工程项目计划》修订v0.1.2 |  |  |
| 33 | 3.9.5 | 《需求工程项目计划》修订v0.2.0 | manual | 1h | 2018-10-30 19:00 | 2018-10-30 20:00 | 32 |  |  | 沈启航 [90%] | 0.9h | 《需求工程项目计划》修订v0.2.0 | 《需求工程项目计划》修订v0.1.3 |  |  |
| 34 | 3.9.6 | 《需求工程项目计划》修订v0.2.1 | manual | 1h | 2018-11-04 19:00 | 2018-11-04 20:00 | 33 |  |  | 沈启航 [20%] | 0.2h | 《需求工程项目计划》修订v0.2.1 | 《需求工程项目计划》修订v0.2.0 |  |  |
| 35 | 3.9.7 | 起草《项目范围管理计划》 | manual | 1h | 2018-11-10 19:00 | 2018-11-10 20:00 | 29 |  |  | 骆佳俊 [10%] | 0.1h | 《项目范围质量管理》 | 《项目范围质量管理》模板 | 《项目范围质量管理》模板 | 《项目范围质量管理》 |
| 36 | 3.9.8 | 起草《项目进度管理计划》 | manual | 1h | 2018-11-10 19:00 | 2018-11-10 20:00 | 29 |  |  | 骆佳俊 [10%] | 0.1h | 《项目进度管理计划》 | 《项目进度管理计划》模板 | 《项目进度管理计划》模板 | 《项目进度管理计划》 |
| 37 | 3.9.9 | 起草《项目成本管理计划》 | manual | 1d | 2018-11-10 19:00 | 2018-11-10 20:00 | 29 |  |  | 骆佳俊 [10%] | 0.1h | 《项目成本管理》 | 《项目成本管理》模板 | 《项目成本管理》模板 | 《项目成本管理》 |
| 38 | 3.9.10 | 起草《项目质量管理计划》 | manual | 1h | 2018-11-10 19:00 | 2018-11-11 18:00 | 29 |  |  | 骆佳俊 [10%] | 0.1h | 《项目质量管理计划》 | 《项目成本管理》模板 | 《项目成本管理》模板 | 《项目质量管理计划》 |
| 39 | 3.9.11 | 起草《人力资源管理计划》 | manual | 1h | 2018-11-10 19:00 | 2018-11-10 20:00 | 29 |  |  | 叶柏成 [10%] | 0.1h | 《人力资源管理子计划》 | 《人力资源管理子计划》模板 | 《人力资源管理子计划》模板 | 《人力资源管理子计划》 |
| 40 | 3.9.12 | 起草《沟通管理子计划》 | manual | 1h | 2018-11-10 19:00 | 2018-11-10 20:00 | 29 |  |  | 叶柏成 [10%] | 0.1h | 《沟通管理子计划》 | 《沟通管理子计划》模板 | 《沟通管理子计划》模板 | 《沟通管理子计划》 |
| 41 | 3.9.13 | 起草《风险管理子计划》 | manual | 1h | 2018-11-10 19:00 | 2018-11-10 20:00 | 29 |  |  | 叶柏成 [10%] | 0.1h | 《风险管理子计划》 | 《风险管理子计划》模板 | 《风险管理子计划》模板 | 《风险管理子计划》 |
| 42 | 3.9.14 | 起草《采购管理子计划》 | manual | 1h | 2018-11-10 19:00 | 2018-11-10 20:00 | 29 |  |  | 叶柏成 [10%] | 0.1h | 《采购管理子计划》 | 《采购管理子计划》模板 | 《采购管理子计划》模板 | 《采购管理子计划》 |
| 43 | 3.9.15 | 起草《配置管理子计划》 | manual | 1h | 2018-11-10 19:00 | 2018-11-10 20:00 | 29 |  | start no earlier than 2018-11-10 19:00 | 叶柏成 [10%] | 0.1h | 《配置管理子计划》 | 《配置管理子计划》 | 《配置管理子计划》 | 《配置管理子计划》 |
| 44 | 3.9.16 | 《需求工程项目计划》修订v0.3.0 | manual | 2d | 2018-11-11 18:00 | 2018-11-11 20:00 | 34, 35, 36, 37, 38, 39, 40, 41, 42, 43 |  |  |  | 1h |  |  |  |  |
| 45 | 3.9.17 | 《质量保证计划》发布 | milestone | 0h | 2018-11-11 18:00 | 2018-11-11 18:00 | 38 | 1d |  |  |  | 《QA计划》 | 起草《项目质量管理计划》 |  |  |
| 46 | 3.10 | 《需求工程计划》发布 | milestone | 0h | 2018-11-11 20:00 | 2018-11-11 20:00 | 44, 45 | 0d |  |  |  | 《需求工程计划》 | 《需求工程项目计划》修订v0.3.0 |  |  |
| 47 | 4 | **需求开发** |  | 62d | 2018-11-12 20:00 | 2018-12-30 18:00 | 2, 19 | 0d |  |  |  |  |  |  |  |
| 48 | 4.1 | **需求获取** |  | 9d | 2018-11-12 20:00 | 2018-11-18 19:00 | 46 | 0d |  |  |  |  |  |  |  |
| 49 | 4.1.1 | 定义产品愿景和项目范围 |  | 1h | 2018-11-12 20:00 | 2018-11-12 21:00 | 46 | 0d |  |  |  |  |  |  |  |
| 50 | 4.1.2 | 访谈后临时会议 |  | 1h | 2018-11-13 20:00 | 2018-11-13 21:00 | 49 | 0d |  |  |  |  |  |  |  |
| 51 | 4.1.3 | 《愿景与范围》文档 | milestone | 1h | 2018-11-14 20:00 | 2018-11-14 21:00 | 50 | 0d |  |  |  |  |  |  |  |
| 52 | 4.1.4 | 识别用户类型及其特征 |  | 1h | 2018-11-15 20:00 | 2018-11-15 21:00 | 51 | 0d |  |  |  |  |  |  |  |
| 53 | 4.1.5 | 为每类用户选出用户代表 |  | 1h | 2018-11-16 20:00 | 2018-11-16 21:00 | 52 | 0d |  |  |  |  |  |  |  |
| 54 | 4.1.6 | 识别系统事件和反应 |  | 1h | 2018-11-17 17:00 | 2018-11-17 18:00 | 53 | 0d |  |  |  |  |  |  |  |
| 55 | 4.1.7 | 举办需求访谈 |  | 1h | 2018-11-17 18:00 | 2018-11-17 19:00 | 54 | 0d |  |  |  |  |  |  |  |
| 56 | 4.1.8 | 检查现有系统在需求方面的报告 |  | 1h | 2018-11-18 17:00 | 2018-11-18 18:00 | 55 | 0d |  |  |  |  |  |  |  |
| 57 | 4.1.9 | 重用现有需求 |  | 1h | 2018-11-18 18:00 | 2018-11-18 19:00 | 56 | 0d |  |  |  |  |  |  |  |

| ID | WBS | Task | Type | Duration | Start | Finish | Predecessors | Total slack |
| --- | --- | --- | --- | --- | --- | --- | --- | --- |
| 58 | 4.2 | **需求分析** |  | 25d | 2018-11-19 20:00 | 2018-12-08 19:00 | 48 | 0d |
| 59 | 4.2.1 | 分析需求可实现性 |  | 1h | 2018-11-19 20:00 | 2018-11-19 21:00 | 57, 46 | 0d |
| 60 | 4.2.2 | 创建用户界面以及技术原型 |  | 20h | 2018-11-20 20:00 | 2018-12-05 21:00 | 59 | 0d |
| 61 | 4.2.3 | 需求按优先级排序 |  | 1h | 2018-12-06 20:00 | 2018-12-06 21:00 | 60 | 0d |
| 62 | 4.2.4 | 建立数据字典 |  | 1h | 2018-12-07 20:00 | 2018-12-07 21:00 | 61 | 0d |
| 63 | 4.2.5 | 为需求建模 |  | 1h | 2018-12-08 17:00 | 2018-12-08 18:00 | 62 | 0d |
| 64 | 4.2.6 | 分析系统与外部世界之间的联系 |  | 1h | 2018-12-08 18:00 | 2018-12-08 19:00 | 63 | 0d |
| 65 | 4.3 | **需求规范说明** |  | 25d | 2018-12-09 17:00 | 2018-12-28 21:00 | 58 | 0d |
| 66 | 4.3.1 | 使用需求文档模板 |  | 1h | 2018-12-09 17:00 | 2018-12-09 18:00 | 64, 46 | 0d |
| 67 | 4.3.2 | 明确需求来源 |  | 1h | 2018-12-09 18:00 | 2018-12-09 19:00 | 66 | 0d |
| 68 | 4.3.3 | 记录业务规则 |  | 1h | 2018-12-10 20:00 | 2018-12-10 21:00 | 67 | 0d |
| 69 | 4.3.4 | 记录非功能需求 |  | 1h | 2018-12-11 20:00 | 2018-12-11 21:00 | 68 | 0d |
| 70 | 4.3.5 | 编写《需求规格说明书》 |  | 21h | 2018-12-12 20:00 | 2018-12-28 21:00 | 69 | 0d |
| 71 | 4.4 | **需求验证** |  | 3d | 2018-12-29 17:00 | 2018-12-30 18:00 | 65 | 0d |
| 72 | 4.4.1 | 需求评审 |  | 1h | 2018-12-29 17:00 | 2018-12-29 18:00 | 70, 46 | 0d |
| 73 | 4.4.2 | 测试需求 |  | 1h | 2018-12-29 18:00 | 2018-12-29 19:00 | 72 | 0d |
| 74 | 4.4.3 | 定义验收标准 |  | 1h | 2018-12-30 17:00 | 2018-12-30 18:00 | 73 | 0d |
| 75 | 4.5 | 《需求规格说明书》发布 | milestone | 0h | 2018-12-30 18:00 | 2018-12-30 18:00 | 74 | 0d |
| 76 | 5 | **需求管理** |  | 16d | 2018-12-30 18:00 | 2019-01-12 18:00 | 75 | 0d |
| 77 | 5.1 | 建立一个需求变更控制流程 |  | 1h | 2018-12-30 18:00 | 2018-12-30 19:00 | 75 | 0d |
| 78 | 5.2 | 对需求变更进行影响分析 |  | 1h | 2018-12-31 20:00 | 2018-12-31 21:00 | 77 | 0d |
| 79 | 5.3 | 建立基线并控制需求集合版本 |  | 1h | 2019-01-01 20:00 | 2019-01-01 21:00 | 78 | 0d |
| 80 | 5.4 | 维护需求变更的历史记录 |  | 1h | 2019-01-02 20:00 | 2019-01-02 21:00 | 79 | 0d |
| 81 | 5.5 | 跟踪每个需求的状态 |  | 1h | 2019-01-03 20:00 | 2019-01-03 21:00 | 80 | 0d |
| 82 | 5.6 | 维护一个需求可跟踪矩阵 |  | 1h | 2019-01-04 20:00 | 2019-01-04 21:00 | 81 | 0d |
| 83 | 5.7 | 使用需求管理工具 |  | 10h | 2019-01-05 17:00 | 2019-01-12 18:00 | 82 | 0d |
| 84 | 5.8 | 《需求规格说明书》评审 | milestone, manual | 0h | 2019-01-12 18:00 | 2019-01-12 18:00 | 83 |  |

| ID | WBS | Task | Type | Duration | Start | Finish | Predecessors | Total slack |
| --- | --- | --- | --- | --- | --- | --- | --- | --- |
| 85 | 6 | **需求阶段收尾** |  | 3d | 2019-01-12 18:00 | 2019-01-13 19:00 | 84 | 0d |
| 86 | 6.1 | 汇总文档 |  | 2h | 2019-01-12 18:00 | 2019-01-13 18:00 | 84 | 0d |
| 87 | 6.2 | 项目总评 | manual | 1h | 2019-01-13 18:00 | 2019-01-13 19:00 | 86 |  |
| 88 | 6.3 | 《项目总结报告》 | milestone | 0h | 2019-01-13 19:00 | 2019-01-13 19:00 | 87 | 0d |
